# Gantt

How a schedule from MS Project changed from version to version. A marks actual dates.

## Version 1 (saved 2025-02-24)

Note of the change: Finished TFG First Report

| ID | WBS | Task | Duration | Start | Finish | Predecessors | Complete | Total float | Constraint |
| --- | --- | --- | --- | --- | --- | --- | --- | --- | --- |
| 1 | 1 | **TFG** | 80d | 2025-02-17 A | 2025-06-06 |  | 22% | 0d |  |
| 2 | 1.1 | **Inicio** | 7d | 2025-02-17 A | 2025-02-25 |  | 93% | 0d |  |
| 3 | 1.1.1 | **Buscar estado del arte** | 4d | 2025-02-17 A | 2025-02-20 A |  | 100% |  |  |
| 4 |  | Buscar estado del arte Superresolución | 4d | 2025-02-17 A | 2025-02-20 A |  | 100% |  | start no earlier than 2025-02-17 |
| 5 |  | Buscar estado del arte Superresolución Gaussian Splatting | 4d | 2025-02-17 A | 2025-02-20 A |  | 100% |  |  |
| 6 |  | Buscar estado del arte Superresolución Remote Sensing | 4d | 2025-02-17 A | 2025-02-20 A |  | 100% |  |  |
| 7 | 1.1.2 | **Planificar trabajo** | 2d | 2025-02-21 A | 2025-02-24 A | 3 | 100% |  |  |
| 8 |  | Definir objetivos | 1d | 2025-02-21 A | 2025-02-21 A |  | 100% |  |  |
| 9 |  | Definir metodología | 1d | 2025-02-21 A | 2025-02-21 A |  | 100% |  |  |
| 10 |  | Dividir tareas | 1d | 2025-02-24 A | 2025-02-24 A | 9 | 100% |  |  |
| 11 |  | Crear GitHub | 1d | 2025-02-21 A | 2025-02-21 A |  | 100% |  |  |
| 12 | 1.1.3 | **Redactar primer informe** | 7d | 2025-02-17 A | 2025-02-25 |  | 77% | 0d |  |
| 13 |  | Redactar informe | 6d | 2025-02-17 A | 2025-02-24 |  | 90% | 0d |  |
| 14 |  | Revisar informe | 1d | 2025-02-25 | 2025-02-25 | 13 |  | 0d |  |
| 15 | 1.2 | **Implementar artículo** | 45d | 2025-02-26 | 2025-04-29 | 12 |  | 0d |  |
| 16 | 1.2.1 | **Implementar RGB** | 34d | 2025-02-26 | 2025-04-14 |  |  | 0d |  |
| 17 |  | Entender Condition Injection Block | 1d | 2025-02-26 | 2025-02-26 |  |  | 0d |  |
| 18 |  | Implementar Condition Injection Block | 3d | 2025-02-27 | 2025-03-03 | 17 |  | 0d |  |
| 19 |  | Entender Gaussian Interaction Block | 1d | 2025-03-04 | 2025-03-04 | 18 |  | 0d |  |
| 20 |  | Implementar Gaussian Interaction Block | 3d | 2025-03-05 | 2025-03-07 | 19 |  | 0d |  |
| 21 |  | Entender Gaussian Primary Head | 1d | 2025-03-10 | 2025-03-10 | 20 |  | 0d |  |
| 22 |  | Implementar Gaussian Primary Head | 3d | 2025-03-11 | 2025-03-13 | 21 |  | 0d |  |
| 23 |  | Entender 2D Rasterization Block | 1d | 2025-03-14 | 2025-03-14 | 22 |  | 0d |  |
| 24 |  | Aprender a combinar Pytorch+Cuda | 1d | 2025-03-17 | 2025-03-17 | 23 |  | 0d |  |
| 25 |  | Implementar 2D Rasterization | 10d | 2025-03-18 | 2025-03-31 | 24 |  | 0d |  |
| 26 |  | Preparar EDSR feature extractor | 2d | 2025-04-01 | 2025-04-02 | 25 |  | 0d |  |
| 27 |  | Conectar todos los bloques | 1d | 2025-04-03 | 2025-04-03 | 26 |  | 0d |  |
| 28 |  | Crear bucle de entrenamiento | 1d | 2025-04-04 | 2025-04-04 | 27 |  | 0d |  |
| 29 |  | Preparar Dataset RGB | 1d | 2025-04-07 | 2025-04-07 | 28 |  | 0d |  |
| 30 |  | Entrenar modelo | 4d | 2025-04-08 | 2025-04-11 | 29 |  | 0d |  |
| 31 |  | Comparar con paper original | 1d | 2025-04-14 | 2025-04-14 | 30 |  | 0d |  |
| 32 | 1.2.2 | **Implementar Multiespectral** | 11d | 2025-04-15 | 2025-04-29 | 16 |  | 0d |  |
| 33 |  | Adaptar Condition Injection Block | 1d | 2025-04-15 | 2025-04-15 |  |  | 0d |  |
| 34 |  | Adaptar Gaussian Interaction Block | 1d | 2025-04-16 | 2025-04-16 | 33 |  | 0d |  |
| 35 |  | Adaptar Gaussian Splatting Head | 1d | 2025-04-17 | 2025-04-17 | 34 |  | 0d |  |
| 36 |  | Adaptar 2D Rasterization | 1d | 2025-04-18 | 2025-04-18 | 35 |  | 0d |  |
| 37 |  | Adaptar EDSR feature extractor | 1d | 2025-04-21 | 2025-04-21 | 36 |  | 0d |  |
| 38 |  | Preparar Dataset MS para EDSR | 1d | 2025-04-22 | 2025-04-22 | 37 |  | 0d |  |
| 39 |  | Preparar Dataset MS para GSASR | 1d | 2025-04-23 | 2025-04-23 | 38 |  | 0d |  |
| 40 |  | Crear bucle de entrenamiento para EDSR | 1d | 2025-04-24 | 2025-04-24 | 39 |  | 0d |  |
| 41 |  | Entrenar EDSR | 1d | 2025-04-25 | 2025-04-25 | 40 |  | 0d |  |
| 42 |  | Entrenar GSASR | 1d | 2025-04-28 | 2025-04-28 | 41 |  | 0d |  |
| 43 |  | Comparar con modelo RGB | 1d | 2025-04-29 | 2025-04-29 | 42 |  | 0d |  |
| 44 | 1.3 | **Comparar con SotA** | 21d | 2025-04-30 | 2025-05-28 | 15 |  | 0d |  |
| 45 | 1.3.1 | **Comparar con CiaoSR** | 7d | 2025-04-30 | 2025-05-08 |  |  | 0d |  |
| 46 |  | Adaptar CiaoSR a MS | 1d | 2025-04-30 | 2025-04-30 |  |  | 0d |  |
| 47 |  | Crear bucle de entrenamiento | 1d | 2025-05-01 | 2025-05-01 | 46 |  | 0d |  |
| 48 |  | Entrenar CiaoSR | 4d | 2025-05-02 | 2025-05-07 | 47 |  | 0d |  |
| 49 |  | Comparar con GSASR | 1d | 2025-05-08 | 2025-05-08 | 48 |  | 0d |  |
| 50 | 1.3.2 | **Comparar Transformer SotA** | 7d | 2025-05-09 | 2025-05-19 | 45 |  | 0d |  |
| 51 |  | Adaptar Transformer a MS | 1d | 2025-05-09 | 2025-05-09 |  |  | 0d |  |
| 52 |  | Crear bucle de entrenamiento | 1d | 2025-05-12 | 2025-05-12 | 51 |  | 0d |  |
| 53 |  | Entrenar Transformer | 4d | 2025-05-13 | 2025-05-16 | 52 |  | 0d |  |
| 54 |  | Comparar con GSASR | 1d | 2025-05-19 | 2025-05-19 | 53 |  | 0d |  |
| 55 | 1.3.3 | **Comparar con Difusión SotA** | 7d | 2025-05-20 | 2025-05-28 | 50 |  | 0d |  |
| 56 |  | Adaptar Difusión a MS | 1d | 2025-05-20 | 2025-05-20 |  |  | 0d |  |
| 57 |  | Crear bucle de entrenamiento | 1d | 2025-05-21 | 2025-05-21 | 56 |  | 0d |  |
| 58 |  | Entrenar Difusión | 4d | 2025-05-22 | 2025-05-27 | 57 |  | 0d |  |
| 59 |  | Comparar con GSASR | 1d | 2025-05-28 | 2025-05-28 | 58 |  | 0d |  |
| 60 | 1.4 | **Combinar HFN con GSASR** | 7d | 2025-05-29 | 2025-06-06 | 44 |  | 0d |  |
| 61 | 1.4.1 | **HFN + GSASR** | 7d | 2025-05-29 | 2025-06-06 |  |  | 0d |  |
| 62 |  | Preparar HFN | 1d | 2025-05-29 | 2025-05-29 |  |  | 0d |  |
| 63 |  | Crear bucle de entrenamiento | 1d | 2025-05-30 | 2025-05-30 | 62 |  | 0d |  |
| 64 |  | Entrenar HFN | 4d | 2025-06-02 | 2025-06-05 | 63 |  | 0d |  |
| 65 |  | Crear pipeline combinada | 1d | 2025-06-06 | 2025-06-06 | 64 |  | 0d |  |

## Version 2 (saved 2025-02-25)

Note of the change: Updated advance of the project in the Gantt diagram

Last finish stays 2025-06-06. Complete tasks 7 → 9.

Changed:

| ID | Task | Start | Finish | Complete | Total float |
| --- | --- | --- | --- | --- | --- |
| 1 | **TFG** |  |  | 22% → 24% |  |
| 2 | **Inicio** |  | 2025-02-25 A | 93% → 100% | 0d → none |
| 12 | **Redactar primer informe** |  | 2025-02-25 A | 77% → 100% | 0d → none |
| 13 | Redactar informe |  | 2025-02-24 A | 90% → 100% | 0d → none |
| 14 | Revisar informe | 2025-02-25 A | 2025-02-25 A | 0% → 100% | 0d → none |

## Version 3 (saved 2025-03-05)

Note of the change: Update Gantt's percentages with current progress

Last finish stays 2025-06-06. Complete tasks 9 → 11.

Changed:

| ID | Task | Start | Finish | Complete | Total float |
| --- | --- | --- | --- | --- | --- |
| 1 | **TFG** |  |  | 24% → 32% |  |
| 15 | **Implementar artículo** | 2025-02-26 A |  | 0% → 16% |  |
| 16 | **Implementar RGB** | 2025-02-26 A |  | 0% → 22% |  |
| 17 | Entender Condition Injection Block | 2025-02-26 A | 2025-02-26 A | 0% → 100% | 0d → none |
| 18 | Implementar Condition Injection Block | 2025-02-27 A |  | 0% → 80% | 0d → 30d |
| 19 | Entender Gaussian Interaction Block | 2025-03-04 A | 2025-03-04 A | 0% → 100% | 0d → none |
| 20 | Implementar Gaussian Interaction Block | 2025-03-05 A |  | 0% → 80% | 0d → 0.6d |
| 27 | Conectar todos los bloques | 2025-04-03 A |  | 0% → 60% |  |

## Version 4 (saved 2025-03-24)

Note of the change: Update Gantt's percentages with current progress

Last finish stays 2025-06-06. Complete tasks 11 → 16.

Changed:

| ID | Task | Start | Finish | Complete | Total float |
| --- | --- | --- | --- | --- | --- |
| 1 | **TFG** |  |  | 32% → 51% |  |
| 15 | **Implementar artículo** |  |  | 16% → 58% |  |
| 16 | **Implementar RGB** |  |  | 22% → 76% |  |
| 18 | Implementar Condition Injection Block |  |  | 80% → 90% |  |
| 20 | Implementar Gaussian Interaction Block |  |  | 80% → 90% | 0.6d → 26d |
| 21 | Entender Gaussian Primary Head | 2025-03-10 A | 2025-03-10 A | 0% → 100% | 0.6d → none |
| 22 | Implementar Gaussian Primary Head | 2025-03-11 A |  | 0% → 90% | 0.6d → 22d |
| 23 | Entender 2D Rasterization Block | 2025-03-14 A | 2025-03-14 A | 0% → 100% | 0.6d → none |
| 24 | Aprender a combinar Pytorch+Cuda | 2025-03-17 A | 2025-03-17 A | 0% → 100% | 0.6d → none |
| 25 | Implementar 2D Rasterization | 2025-03-18 A |  | 0% → 90% | 0.6d → 10d |
| 26 | Preparar EDSR feature extractor | 2025-04-01 A | 2025-04-02 A | 0% → 100% | 0.6d → none |
| 27 | Conectar todos los bloques |  |  | 60% → 90% | 0d → 6d |
| 29 | Preparar Dataset RGB | 2025-04-07 A | 2025-04-07 A | 0% → 100% | 0d → none |
